# Schedule

Schedule from MS Project, 2012-12-06 to 2013-04-15.

## Calendars

- Standard: Mon-Fri 20:00-23:59; Sat-Sun 18:00-23:59. Exceptions (off unless hours are given): 2012-12-29 to 2013-01-02 (Nghỉ tết Dương Lịch), 2013-02-08 to 2013-02-17 (Nghỉ tết Âm lịch 2013).

## Resources

| Resource | Group |
| --- | --- |
| Khánh | Leader |
| Thịnh | Member/Tester |
| Vượng | Member/Developer |
| Anh | Member/Tester |

## Schedule

| ID | WBS | Task | Type | Duration | Start | Finish | Total slack | Resources | Work |
| --- | --- | --- | --- | --- | --- | --- | --- | --- | --- |
| 1 | 1 | **Initiating** |  | 12.09d | 2012-12-07 08:00 | 2012-12-22 17:00 |  |  | 36h |
| 2 | 1.1 | Prepare stakeholder analysis | manual | 1.12d | 2012-12-07 08:00 | 2012-12-07 17:00 |  | Khánh | 9h |
| 3 | 1.2 | Prepare business case | manual | 1.12d | 2012-12-08 08:00 | 2012-12-08 17:00 |  | Khánh | 9h |
| 4 | 1.3 | Prepare project charter | manual | 1.12d | 2012-12-09 08:00 | 2012-12-09 17:00 |  | Khánh | 9h |
| 5 | 1.4 | Hold kick off meeting | manual | 1.12d | 2012-12-10 08:00 | 2012-12-10 17:00 |  | Khánh | 9h |
| 6 | 2 | **Planning** |  | 22.06d | 2012-12-24 08:00 | 2013-01-31 17:00 |  |  | 8h |
| 7 | 2.1 | **Project Intergration Management** |  | 0.5d? | 2012-12-24 08:00 | 2012-12-24 11:59 |  |  |  |
| 8 | 2.1.1 | Develop project management plan | manual | 0.5d? | 2012-12-24 08:00 | 2012-12-24 11:59 |  |  |  |
| 9 | 2.2 | **Project Scope Management** |  | 0d? | 2012-12-24 08:00 | 2012-12-24 16:00 | 0d |  | 8h |
| 10 | 2.2.1 | Get Documents from Previous team | manual | 1d | 2012-12-24 08:00 | 2012-12-24 16:00 |  | Thịnh | 8h |
| 11 | 2.2.2 | Develop Scope Statement | manual | 0.5d? | 2012-12-24 08:00 | 2012-12-24 11:59 |  |  |  |
| 12 | 2.2.3 | Create WBS and WBS Structure | manual | 0.5d? | 2012-12-24 08:00 | 2012-12-24 11:59 |  |  |  |
| 13 | 2.3 | **Project Time Management** |  | 0d? | 2012-12-24 08:00 | 2012-12-24 11:59 | 0d |  |  |
| 14 | 2.3.1 | Define Activities | manual | 0.5d? | 2012-12-24 08:00 | 2012-12-24 11:59 |  |  |  |
| 15 | 2.3.2 | Activities List, MileStoneList Documents | milestone, manual | 0d | 2012-12-24 08:00 | 2012-12-24 08:00 |  |  |  |
| 16 | 2.3.3 | Sequence Activities | manual | 0.5d? | 2012-12-24 08:00 | 2012-12-24 11:59 |  |  |  |
| 17 | 2.3.4 | Estimate Activities Duration | manual | 0.5d? | 2012-12-24 08:00 | 2012-12-24 11:59 |  |  |  |
| 18 | 2.3.5 | Develop Schedule | manual | 0.5d? | 2012-12-24 08:00 | 2012-12-24 11:59 |  |  |  |
| 19 | 2.3.6 | Project schedule, Schedule baseline | milestone, manual | 0d | 2012-12-24 08:00 | 2012-12-24 08:00 |  |  |  |
| 20 | 2.3.7 | <New Task> | manual | 0.5d? | 2012-12-24 08:00 | 2012-12-24 11:59 |  |  |  |
| 21 | 3 | **Executing** |  | 68.89d | 2012-12-06 08:00 | 2013-04-15 17:00 |  |  | 459.63h |
| 22 | 3.1 | Create Development Env | manual | 2d | 2012-12-10 08:00 | 2012-12-11 20:01 |  | Anh; Khánh; Thịnh; Vượng | 87.03h |
| 23 | 3.2 | **MVC3 Learning** |  | 8.61d? | 2012-12-06 08:00 | 2012-12-18 21:03 |  |  | 151.83h |
| 24 | 3.2.1 | Microsoft MVC3 Tuts | manual | 5.37d | 2012-12-06 08:00 | 2012-12-12 23:03 |  | Khánh [80%]; Vượng | 71.34h |
| 25 | 3.2.2 | OSMSharp Studying | manual | 6.11d | 2012-12-06 08:00 | 2012-12-14 21:03 |  | Khánh [80%]; Vượng | 80.48h |
| 26 | 3.2.3 | Basic Report about OSM Architecture & How to intergrate to our project | manual | 0.5d | 2012-12-06 08:00 | 2012-12-06 11:59 |  |  |  |

| ID | WBS | Task | Type | Duration | Start | Finish | Resources | Work |
| --- | --- | --- | --- | --- | --- | --- | --- | --- |
| 27 | 3.3 | **Algorithm Implementing** |  | 10.1d? | 2012-12-06 08:00 | 2012-12-21 21:03 |  | 220.77h |
| 28 | 3.3.1 | Implementing K-Means Clustering | manual | 1.12d? | 2012-12-06 08:00 | 2012-12-06 17:00 | Khánh | 9h |
| 29 | 3.3.2 | Implementing ShrinkWrap Algorithm | manual | 4.12d? | 2012-12-06 08:00 | 2012-12-10 21:03 | Vượng | 33.02h |
| 30 | 3.3.3 | Intergrating Our solution with OSMSharp | manual | 6.61d? | 2012-12-06 08:00 | 2012-12-15 19:04 | Khánh [80%]; Vượng | 91.68h |
| 31 | 3.3.4 | Algorithm Testing + Bug Fix | manual | 4.62d? | 2012-12-06 08:00 | 2012-12-11 21:03 | Thịnh; Anh | 79.1h |
| 32 | 3.3.5 | DLL Deliverables | manual | 0.5d? | 2012-12-06 08:00 | 2012-12-06 11:59 | Khánh; Vượng | 7.97h |
